# ProyectoABP

Schedule from MS Project, 2017-09-11 to 2018-05-30, status date 2017-11-15, costs in €, A marks actual dates.
Schlumberger

## Calendars

- Estándar: Mon-Fri 09:00-13:00, 15:00-19:00; Sat-Sun off.

## Resources

| Resource | Rate |
| --- | --- |
| Alexei | 20 |
| Adrián | 20 |
| Laura | 20 |
| Luis | 20 |
| Pablo | 20 |

## Schedule

| ID | WBS | Task | Type | Duration | Start | Finish | Predecessors | Complete | Remaining | Actual start | Baseline start | Baseline finish | Baseline duration | Total slack | Free slack | Constraint | Deadline | Resources | Work | Actual work | Cost | Baseline cost | Actual cost |
| --- | --- | --- | --- | --- | --- | --- | --- | --- | --- | --- | --- | --- | --- | --- | --- | --- | --- | --- | --- | --- | --- | --- | --- |
| 1 | 1 | **Hito 0** |  | 28d | 2017-09-11 09:00 | 2017-10-18 19:00 A |  | 100% |  | 2017-09-18 09:00 |  |  |  |  |  |  | 2017-10-18 19:00 |  | 126.53h | 126.53h | 2,530.51 |  | 2,530.51 |
| 2 | 1.1 | [PM] Rellenar documento de Concepto del proyecto |  | 1d | 2017-09-18 09:00 A | 2017-09-18 19:00 A |  | 100% |  |  |  |  |  |  |  | start no earlier than 2017-09-18 09:00 | 2017-10-18 19:00 | Adrián [20%]; Alexei [20%]; Laura [20%]; Luis [20%]; Pablo [20%] | 8h | 8h | 160 |  | 160 |
| 3 | 1.2 | [PM] Rellenar versión inicial del documento Especificación |  | 1d | 2017-09-19 09:00 A | 2017-09-19 19:00 A | 2 | 100% |  |  |  |  |  |  |  |  | 2017-10-18 19:00 | Adrián [20%]; Alexei [20%]; Laura [20%]; Luis [20%]; Pablo [20%] | 8h | 8h | 160 |  | 160 |
| 4 | 1.3 | [PM] Completar y revisar documento Especificación |  | 1d | 2017-09-20 09:00 A | 2017-09-20 19:00 A | 3 | 100% |  |  |  |  |  |  |  |  | 2017-10-18 19:00 | Adrián [20%]; Alexei [20%]; Laura [20%]; Luis [20%]; Pablo [20%] | 8h | 8h | 160 |  | 160 |
| 5 | 1.4 | **[PM] Elaborar el Presupuesto (hoja de cálculo)** |  | 6d | 2017-09-21 09:00 A | 2017-09-28 19:00 A | 2 | 100% |  |  |  |  |  |  |  |  | 2017-10-18 19:00 |  | 46.5h | 46.5h | 930 |  | 930 |
| 6 | 1.4.1 | [PM] Rellenar del presupuesto |  | 3.75d | 2017-09-25 11:00 A | 2017-09-28 19:00 A | 8 | 100% |  |  |  |  |  |  |  |  |  | Adrián [20%]; Alexei [20%]; Laura [20%]; Luis [20%]; Pablo [20%] | 30h | 30h | 600 |  | 600 |
| 7 | 1.4.2 | [PM] Reunirse con profesores |  | 2d | 2017-09-21 09:00 A | 2017-09-22 19:00 A | 2 | 100% |  |  |  |  |  |  |  |  |  | Adrián [20%]; Alexei [20%]; Laura [20%]; Luis [20%]; Pablo [20%] | 16h | 16h | 320 |  | 320 |
| 8 | 1.4.3 | [PM] Rellenar documentos adicionales |  | 0.25d | 2017-09-25 09:00 A | 2017-09-25 11:00 A | 7 | 100% |  |  |  |  |  |  |  |  |  | Adrián [5%]; Alexei [5%]; Laura [5%]; Luis [5%]; Pablo [5%] | 0.5h | 0.5h | 10 |  | 10 |
| 9 | 1.5 | [PM] Crear WBS del proyecto en Project |  | 3d | 2017-09-29 09:00 A | 2017-10-03 19:00 A | 5, 6, 7, 8 | 100% |  |  |  |  |  |  |  |  | 2017-10-18 19:00 | Adrián | 24h | 24h | 480 |  | 480 |
| 10 | 1.6 | [PM] Crear plan general (Tareas y precedencias básicas) en Project |  | 3d | 2017-10-16 09:00 A | 2017-10-18 19:00 A | 9 | 100% |  |  |  |  |  |  |  | finish no earlier than 2017-10-18 19:00 | 2017-10-18 19:00 | Alexei | 24h | 24h | 480 |  | 480 |
| 11 | 1.7 | **[TDS] Rellenar la Cue Sheet [1/6]** |  | 0.88d | 2017-10-04 09:00 A | 2017-10-04 18:02 A |  | 100% |  |  |  |  |  |  |  |  |  | Luis [25%]; Pablo [25%]; Adrián [25%] | 8.03h | 8.03h | 160.51 |  | 160.51 |
| 12 | 1.7.1 | [TDS] Elaboración Cue Sheet inicial |  | 0.88d | 2017-10-04 09:00 A | 2017-10-04 18:02 A |  | 100% |  |  |  |  |  |  |  | start no earlier than 2017-10-04 09:00 | 2017-10-18 19:00 | Adrián [25%]; Luis [25%]; Pablo [25%] | 5.28h | 5.28h | 105.6 |  | 105.6 |
| 13 | 2 | **Hito 1** |  | 46.5d? | 2017-10-19 15:00 A | 2017-12-22 19:00 | 1 | 95% | 2.47d? |  |  |  |  | 113d | 10d |  | 2018-01-12 19:00 |  | 883.17h | 805.37h | 17,663.33 |  | 16,107.33 |
| 14 | 2.1 | **Iteración 1** |  | 9.25d | 2017-10-19 15:00 A | 2017-11-01 17:00 A | 1 | 100% |  |  | 2017-10-19 15:00 | 2017-11-01 13:00 | 9d |  |  |  |  |  | 47.72h | 47.72h | 954.48 | 993.36 | 954.48 |
| 15 | 2.1.1 | [PM] Registrar tiempos y % de realización de tareas en Project (1/5) |  | 8.5d | 2017-10-19 15:00 A | 2017-10-31 19:00 A |  | 100% |  |  | 2017-10-19 15:00 | 2017-10-31 19:00 | 8.5d |  |  | finish no earlier than 2017-10-31 19:00 |  | Adrián [1%]; Alexei [1%]; Laura [1%]; Luis [1%]; Pablo [1%] | 3.4h | 3.4h | 68 | 68 | 68 |
| 16 | 2.1.2 | [PD] Bocetar cartel |  | 0.75d | 2017-10-20 09:00 A | 2017-10-20 17:00 A |  | 100% |  |  | 2017-10-20 09:00 | 2017-10-20 17:00 | 0.75d |  |  | start no earlier than 2017-10-20 09:00 |  | Alexei [25%]; Laura [25%]; Luis [25%] | 4.5h | 4.5h | 90 | 90 | 90 |
| 17 | 2.1.3 | [TAG] Instalar librería matemática (glm/glmatriz) |  | 0.5d | 2017-10-24 09:00 A | 2017-10-24 13:00 A |  | 100% |  |  | 2017-10-24 09:00 | 2017-10-24 13:00 | 0.5d |  |  | start no earlier than 2017-10-24 09:00 |  | Adrián [8%]; Alexei [8%]; Laura [8%]; Luis [8%]; Pablo [8%] | 1.6h | 1.6h | 32 | 32 | 32 |
| 18 | 2.1.4 | [TAG] Instalar librería de lectura de mallas (assimp…) |  | 1.25d | 2017-10-24 17:00 A | 2017-10-25 19:00 A |  | 100% |  |  | 2017-10-24 17:00 | 2017-10-25 19:00 | 1.25d |  |  | finish no earlier than 2017-10-25 19:00 |  | Adrián [13%]; Alexei [13%]; Laura [13%]; Luis [13%]; Pablo [13%] | 6.5h | 6.5h | 130 | 130 | 130 |
| 19 | 2.1.5 | [TAG] Instalar librería de entrada/salida (SFML…) |  | 1.25d | 2017-10-24 17:00 A | 2017-10-25 19:00 A |  | 100% |  |  | 2017-10-24 17:00 | 2017-10-25 19:00 | 1.25d |  |  | finish no earlier than 2017-10-25 19:00 |  | Adrián [13%]; Alexei [13%]; Laura [13%]; Luis [13%]; Pablo [13%] | 6.5h | 6.5h | 130 | 130 | 130 |
| 20 | 2.1.6 | [PM] Detallar plan iteraciones del mes de Noviembre. Creación Subtareas y precedencias en Project (1/2) |  | 1.2d | 2017-10-24 09:00 A | 2017-10-25 10:36 A | 10 | 100% |  |  | 2017-10-24 09:00 | 2017-10-26 12:12 | 2.4d |  |  | start no earlier than 2017-10-24 09:00 |  | Adrián [21%]; Alexei [21%]; Laura [5%]; Luis [5%]; Pablo [5%] | 5.47h | 5.47h | 109.44 | 218.88 | 109.44 |
| 21 | 2.1.7 | [TDS] Añadir elementos sonoros a la Cue Sheet (1/5) |  | 0.25d | 2017-10-26 09:00 A | 2017-10-26 11:00 A | 12 | 100% |  |  | 2017-10-26 09:00 | 2017-10-26 11:00 | 0.25d |  |  | start no earlier than 2017-10-26 09:00 |  | Luis [13%]; Pablo [13%]; Adrián [13%] | 0.78h | 0.78h | 15.6 | 15.6 | 15.6 |
| 22 | 2.1.8 | **[PD] Crear vídeo con animación del logo de la empresa [1/5]** |  | 0.75d | 2017-10-27 09:00 A | 2017-10-27 17:00 A |  | 100% |  |  |  |  |  |  |  |  |  | Alexei [25%]; Laura [25%]; Luis [25%] | 9h | 9h | 180 |  | 180 |
| 23 | 2.1.8.1 | [PD] Bocetar logo |  | 0.75d | 2017-10-27 09:00 A | 2017-10-27 17:00 A |  | 100% |  |  | 2017-10-27 09:00 | 2017-10-27 17:00 | 0.75d |  |  | start no earlier than 2017-10-27 09:00 |  | Alexei [25%]; Laura [25%]; Luis [25%] | 4.5h | 4.5h | 90 | 90 | 90 |
| 24 | 2.1.9 | [PM] Detallar plan iteraciones del mes de Noviembre. Asignar recursos a las tareas en Project (1/2) |  | 1.2d | 2017-10-27 09:00 A | 2017-10-30 10:36 A | 20 | 100% |  |  | 2017-10-27 09:00 | 2017-10-31 12:12 | 2.4d |  |  | start no earlier than 2017-10-27 09:00 |  | Adrián [21%]; Alexei [21%]; Laura [5%]; Luis [5%]; Pablo [5%] | 5.47h | 5.47h | 109.44 | 218.88 | 109.44 |
| 25 | 2.1.10 | [PM] Realizar informe iteración 1 |  | 0.75d | 2017-11-01 09:00 A | 2017-11-01 17:00 A | 20, 24, 16, 23 | 100% |  |  | 2017-11-01 09:00 | 2017-11-01 13:00 | 0.5d |  |  | start no earlier than 2017-11-01 09:00 |  | Laura [25%]; Luis [25%]; Pablo [25%] | 4.5h | 4.5h | 90 |  | 90 |
| 26 | 2.1.11 | Objetivo Iteración 1 | milestone | 0d | 2017-11-01 17:00 A | 2017-11-01 17:00 A | 25 | 100% |  |  | 2017-11-01 13:00 | 2017-11-01 13:00 | 0d |  |  |  |  |  |  |  |  |  |  |

| ID | WBS | Task | Type | Duration | Start | Finish | Predecessors | Complete | Remaining | Actual start | Baseline 1 start | Baseline 1 finish | Total slack | Constraint | Resources | Work | Actual work | Cost | Actual cost |
| --- | --- | --- | --- | --- | --- | --- | --- | --- | --- | --- | --- | --- | --- | --- | --- | --- | --- | --- | --- |
| 27 | 2.2 | **Iteración 2** |  | 10d | 2017-11-02 09:00 | 2017-11-15 19:00 | 14 | 99% | 0d | 2017-11-01 15:00 | 2017-11-02 09:00 | 2017-11-15 19:00 |  |  |  | 174.3h | 174.3h | 3,486.05 | 3,486.05 |
| 28 | 2.2.1 | [PM] Registrar tiempos y % de realización de tareas en Project (2/5) |  | 9.5d | 2017-11-01 15:00 A | 2017-11-14 19:00 A |  | 100% |  |  | 2017-11-01 15:00 | 2017-11-14 19:00 |  | finish no earlier than 2017-11-14 19:00 | Adrián [1%]; Alexei [1%]; Laura [1%]; Luis [1%]; Pablo [1%] | 3.8h | 3.8h | 76 | 76 |
| 29 | 2.2.2 | [V1] Iniciar el documento de diseño de mecánicas de los NPCs |  | 0.5d | 2017-11-02 09:00 A | 2017-11-02 13:00 A |  | 100% |  |  | 2017-11-02 09:00 | 2017-11-02 13:00 |  |  | Adrián [13%]; Alexei [13%]; Laura [13%]; Luis [13%]; Pablo [13%] | 2.6h | 2.6h | 52 | 52 |
| 30 | 2.2.3 | [V1] Iniciar el documento de diseño de toma de decisión: espacio y métodos |  | 0.94d | 2017-11-02 09:00 A | 2017-11-02 18:31 A |  | 100% |  |  | 2017-11-02 09:00 | 2017-11-02 18:31 |  |  | Adrián [24%]; Alexei [24%]; Laura [24%]; Luis [24%]; Pablo [24%] | 9.02h | 9.02h | 180.48 | 180.48 |
| 31 | 2.2.4 | [V1] Iniciar el documento de diseño técnico del motor de IA |  | 0.94d | 2017-11-03 09:28 A | 2017-11-03 19:00 A |  | 100% |  |  | 2017-11-03 09:28 | 2017-11-03 19:00 |  | finish no earlier than 2017-11-03 19:00 | Adrián [24%]; Alexei [24%]; Laura [24%]; Luis [24%]; Pablo [24%] | 9.02h | 9.02h | 180.48 | 180.48 |
| 32 | 2.2.5 | **[V2] Diseñar e implementar de la arquitectura basada en componentes (diagrama de clases e implementación) [1/4]** |  | 0.5d | 2017-11-03 09:00 A | 2017-11-03 13:00 A |  | 100% |  |  |  |  |  |  |  | 10h | 10h | 200 | 200 |
| 33 | 2.2.5.1 | [V2] Diseño inicial de la arquitectura basada en componentes |  | 0.5d | 2017-11-03 09:00 A | 2017-11-03 13:00 A |  | 100% |  |  | 2017-11-03 09:00 | 2017-11-03 13:00 |  | start no earlier than 2017-11-03 09:00 | Adrián [50%]; Alexei [50%]; Laura [50%]; Luis [50%]; Pablo [50%] | 10h | 10h | 200 | 200 |
| 34 | 2.2.6 | [RV] Bocetar los personajes |  | 0.25d | 2017-11-03 09:00 A | 2017-11-03 11:00 A |  | 100% |  |  | 2017-11-03 09:00 | 2017-11-03 11:00 |  | start no earlier than 2017-11-03 09:00 | Alexei [25%]; Laura [25%]; Luis [25%]; Adrián [13%]; Pablo [13%] | 2.02h | 2.02h | 40.4 | 40.4 |
| 35 | 2.2.7 | [V2] Definición inicial del formato para la definición de niveles (1/2) |  | 0.25d | 2017-11-06 09:00 A | 2017-11-06 11:00 A |  | 100% |  |  | 2017-11-06 09:00 | 2017-11-06 11:00 |  | start no earlier than 2017-11-06 09:00 | Adrián [25%]; Alexei [25%]; Laura [25%]; Luis [25%]; Pablo [25%] | 2.5h | 2.5h | 50 | 50 |
| 36 | 2.2.8 | [V2] Instalación irrLicht |  | 0.5d | 2017-11-06 09:00 A | 2017-11-06 13:00 A |  | 100% |  |  | 2017-11-06 09:00 | 2017-11-06 13:00 |  | start no earlier than 2017-11-06 09:00 | Adrián [9%]; Alexei [9%]; Laura [9%]; Luis [9%]; Pablo [9%] | 1.8h | 1.8h | 36 | 36 |
| 37 | 2.2.9 | Instalar Manjaro |  | 1d | 2017-11-02 09:00 A | 2017-11-02 19:00 A |  | 100% |  |  |  |  |  |  | Adrián [12%]; Alexei [12%]; Laura [12%]; Luis [12%]; Pablo [12%] | 4.8h | 4.8h | 96 | 96 |
| 38 | 2.2.10 | [TAG] Instalar librería matemática (glm/glmatriz) |  | 0.5d | 2017-11-09 09:00 A | 2017-11-09 13:00 A |  | 100% |  |  |  |  |  | start no earlier than 2017-11-09 09:00 | Adrián [8%]; Alexei [8%]; Laura [8%]; Luis [8%]; Pablo [8%] | 1.6h | 1.6h | 32 | 32 |
| 39 | 2.2.11 | [TAG] Instalar librería de lectura de mallas (assimp…) |  | 1.25d | 2017-11-09 09:00 A | 2017-11-10 11:00 A |  | 100% |  |  |  |  |  | start no earlier than 2017-11-09 09:00 | Adrián [13%]; Alexei [13%]; Laura [13%]; Luis [13%]; Pablo [13%] | 6.5h | 6.5h | 130 | 130 |
| 40 | 2.2.12 | [TAG] Instalar librería de entrada/salida (SFML…) |  | 1.25d | 2017-11-10 09:00 A | 2017-11-13 11:00 A |  | 100% |  |  |  |  |  | start no earlier than 2017-11-10 09:00 | Adrián [13%]; Alexei [13%]; Laura [13%]; Luis [13%]; Pablo [13%] | 6.5h | 6.5h | 130 | 130 |
| 41 | 2.2.13 | **[V1] Hacer el sistema de toma de decisión con Lógica Difusa [1/3]** |  | 3d | 2017-11-07 09:00 A | 2017-11-09 19:00 A |  | 100% |  |  |  |  |  |  |  | 20.16h | 20.16h | 403.2 | 403.2 |
| 42 | 2.2.13.1 | [V1] Aprender y plantear inicialmente el sistema de Lógica Difusa |  | 3d | 2017-11-07 09:00 A | 2017-11-09 19:00 A | 36, 30, 31 | 100% |  |  | 2017-11-07 09:00 | 2017-11-09 19:00 |  | start no earlier than 2017-11-07 09:00 | Adrián [28%]; Alexei [28%]; Pablo [28%] | 20.16h | 20.16h | 403.2 | 403.2 |
| 43 | 2.2.14 | **[V1] Hacer el sistema de Waypoints para pathfinding continuo [1/3]** |  | 3d | 2017-11-07 09:00 A | 2017-11-09 19:00 A |  | 100% |  |  |  |  |  |  |  | 25.2h | 25.2h | 504 | 504 |
| 44 | 2.2.14.1 | [V1] Aprender y plantear inicialmente el sistema de Waypoints |  | 3d | 2017-11-07 09:00 A | 2017-11-09 19:00 A | 36, 30, 31 | 100% |  |  | 2017-11-07 09:00 | 2017-11-09 19:00 |  | start no earlier than 2017-11-07 09:00 | Adrián [35%]; Alexei [35%]; Pablo [35%] | 25.2h | 25.2h | 504 | 504 |
| 45 | 2.2.15 | [PM] Rellenar documento Gestión de riesgos |  | 0.5d | 2017-11-08 09:00 A | 2017-11-08 13:00 A |  | 100% |  |  | 2017-11-08 09:00 | 2017-11-08 13:00 |  | start no earlier than 2017-11-08 09:00 | Adrián [36%]; Alexei [36%]; Laura [66%]; Luis [66%]; Pablo [36%] | 9.6h | 9.6h | 192 | 192 |
| 46 | 2.2.16 | [TDS] Añadir sonidos externos [1/4] |  | 0.4d | 2017-11-10 09:00 A | 2017-11-10 12:12 A |  | 100% |  |  | 2017-11-10 09:00 | 2017-11-10 12:12 |  | start no earlier than 2017-11-10 09:00 | Adrián [40%]; Luis [40%]; Pablo [40%] | 3.84h | 3.84h | 76.8 | 76.8 |
| 47 | 2.2.17 | [TDS] Rellenar hoja de metadatos [1/4] |  | 0.12d | 2017-11-10 12:12 A | 2017-11-10 15:09 A | 46 | 100% |  |  | 2017-11-10 12:12 | 2017-11-10 15:09 |  | start no earlier than 2017-11-10 09:00 | Adrián [13%]; Luis [13%]; Pablo [13%] | 0.37h | 0.37h | 7.49 | 7.49 |
| 48 | 2.2.18 | [TDS] Rellenar la Cue Sheet [2/6] |  | 0.25d | 2017-11-10 09:00 A | 2017-11-10 11:00 A |  | 100% |  |  | 2017-11-10 09:00 | 2017-11-10 11:00 |  | start no earlier than 2017-11-10 09:00 | Luis [13%]; Pablo [13%]; Adrián [13%] | 0.78h | 0.78h | 15.6 | 15.6 |
| 49 | 2.2.19 | [V2] Realizar del sistema de control del player por motor de físicas 2D, dynamic o kinematic |  | 3d | 2017-11-07 09:00 A | 2017-11-09 19:00 A | 29, 30, 36 | 100% |  |  | 2017-11-07 09:00 | 2017-11-09 19:00 |  | start no earlier than 2017-11-07 09:00 | Laura [52%]; Luis [52%] | 24.96h | 24.96h | 499.2 | 499.2 |
| 50 | 2.2.20 | **[PD] Crear vídeo con animación del logo de la empresa [2/5]** |  | 2d | 2017-11-13 09:00 A | 2017-11-14 19:00 A | 23 | 100% |  |  |  |  |  |  | Alexei [21%]; Laura [21%]; Luis [21%] | 20.16h | 20.16h | 403.2 | 403.2 |
| 51 | 2.2.20.1 | [PD] Hacer diseño final del logo de la empresa |  | 2d | 2017-11-13 09:00 A | 2017-11-14 19:00 A | 23 | 100% |  |  | 2017-11-13 09:00 | 2017-11-14 19:00 |  | start no earlier than 2017-11-13 09:00 | Alexei [21%]; Laura [21%]; Luis [21%] | 10.08h | 10.08h | 201.6 | 201.6 |
| 52 | 2.2.21 | [PM] Detallar plan iteraciones del mes de Noviembre. Creación Subtareas y precedencias en Project (2/2) |  | 0.5d | 2017-11-14 09:00 A | 2017-11-14 13:00 A | 20, 24 | 100% |  |  | 2017-11-14 09:00 | 2017-11-14 13:00 |  | start no earlier than 2017-11-14 09:00 | Adrián [21%]; Alexei [21%]; Laura [5%]; Luis [5%]; Pablo [5%] | 2.28h | 2.28h | 45.6 | 45.6 |
| 53 | 2.2.22 | [PM] Detallar plan iteraciones del mes de Noviembre. Asignar recursos a las tareas en Project (2/2) |  | 0.5d | 2017-11-14 15:00 A | 2017-11-14 19:00 A | 52 | 100% |  |  | 2017-11-14 15:00 | 2017-11-14 19:00 |  | finish no earlier than 2017-11-06 19:00 | Adrián [21%]; Alexei [21%]; Laura [5%]; Luis [5%]; Pablo [5%] | 2.28h | 2.28h | 45.6 | 45.6 |
| 54 | 2.2.23 | [PM] Realizar informe iteración 2 |  | 0.75d | 2017-11-15 09:00 A | 2017-11-15 17:00 A | 28, 29, 30, 49, 31, 33, 35, 45, 51, 52, 53 | 100% |  |  | 2017-11-15 09:00 | 2017-11-15 17:00 |  |  | Laura [25%]; Luis [25%]; Pablo [25%] | 4.5h | 4.5h | 90 | 90 |
| 55 | 2.2.24 | Objetivo iteración 2 | milestone | 0d | 2017-11-15 17:00 | 2017-11-15 17:00 | 54 |  |  |  | 2017-11-15 17:00 | 2017-11-15 17:00 | 0.25d |  |  |  |  |  |  |

| ID | WBS | Task | Type | Duration | Start | Finish | Predecessors | Complete | Remaining | Total slack | Constraint | Resources | Work | Actual work | Cost | Actual cost |
| --- | --- | --- | --- | --- | --- | --- | --- | --- | --- | --- | --- | --- | --- | --- | --- | --- |
| 56 | 2.3 | **Iteración 3** |  | 10d | 2017-11-16 09:00 A | 2017-11-29 19:00 | 27 | 90% | 1.03d |  |  |  | 263.84h | 227.56h | 5,276.8 | 4,551.2 |
| 57 | 2.3.1 | [PM] Registrar tiempos y % de realización de tareas en Project (3/5) |  | 10d | 2017-11-16 09:00 A | 2017-11-29 19:00 A |  | 100% |  |  | start no earlier than 2017-11-16 09:00 | Adrián [1%]; Alexei [1%]; Laura [1%]; Luis [1%]; Pablo [1%] | 4h | 4h | 80 | 80 |
| 58 | 2.3.2 | Hacer reuniones de seguimiento diarias de 15 min |  | 10d | 2017-11-16 09:00 A | 2017-11-29 19:00 A |  | 100% |  |  | start no earlier than 2017-11-16 09:00 | Adrián [3%]; Alexei [3%]; Laura [3%]; Luis [3%]; Pablo [3%] | 12h | 12h | 240 | 240 |
| 59 | 2.3.3 | **[V2] Utilizar propiedades físicas en las mecánicas jugables** |  | 1d | 2017-11-16 09:00 A | 2017-11-16 19:00 A |  | 100% |  |  |  | Luis [96%]; Laura [29%] | 10h | 10h | 200 | 200 |
| 60 | 2.3.3.1 | [V2] Decidir y aprender sobre el motor de físicas a utilizar | milestone | 0d | 2017-11-16 09:00 A | 2017-11-16 09:00 A |  | 100% |  |  |  | Luis [96%]; Laura [29%] |  |  |  |  |
| 61 | 2.3.3.2 | [V2] [NUEVA] Crear motor de físicas própio | milestone | 0d | 2017-11-16 09:00 A | 2017-11-16 09:00 A |  | 100% |  |  |  | Luis [96%]; Laura [29%] |  |  |  |  |
| 62 | 2.3.4 | [RV] Bocetar los elementos |  | 2d | 2017-11-16 09:00 A | 2017-11-17 19:00 A |  | 100% |  |  | finish no earlier than 2017-11-17 19:00 | Laura [50%] | 8h | 8h | 160 | 160 |
| 63 | 2.3.5 | [V1] Hacer sistema de percepción sensorial (vista, oído, olfato, canales…)[1/2] |  | 3d | 2017-11-16 09:00 A | 2017-11-20 19:00 A | 29, 30, 31 | 100% |  |  | finish no earlier than 2017-11-20 19:00 | Adrián [34%]; Alexei [34%]; Pablo [34%] | 24.48h | 24.48h | 489.6 | 489.6 |
| 64 | 2.3.6 | **[TDS] Integrar del motor de audio en el juego con prueba de concepto[1/2]** |  | 3d | 2017-11-17 09:00 A | 2017-11-21 19:00 |  | 33% | 2d | 6d |  |  | 11.84h | 2.88h | 236.8 | 57.6 |
| 65 | 2.3.6.1 | [TDS] Instalar FMOD STUDIO y FMOD STUDIO API |  | 1d | 2017-11-17 09:00 A | 2017-11-17 19:00 A |  | 100% |  |  | start no earlier than 2017-11-17 09:00 | Adrián [12%]; Luis [12%]; Pablo [12%] | 2.88h | 2.88h | 57.6 | 57.6 |
| 66 | 2.3.6.2 | [TDS] Hacer prototipo de fachada de audio |  | 2d | 2017-11-20 09:00 | 2017-11-21 19:00 | 65 |  |  | 6d | finish no earlier than 2017-11-21 19:00 | Adrián [56%] | 8.96h |  | 179.2 |  |
| 67 | 2.3.7 | **[PD] Crear vídeo con animación del logo de la empresa [3/5]** |  | 1d | 2017-11-17 09:00 A | 2017-11-17 19:00 A | 50 | 100% |  |  |  |  | 6h | 6h | 120 | 120 |
| 68 | 2.3.7.1 | [PD] Hacer storyboard de la animación |  | 1d | 2017-11-17 09:00 A | 2017-11-17 19:00 A | 51 | 100% |  |  | start no earlier than 2017-11-17 09:00 | Alexei [25%]; Laura [25%]; Luis [25%] | 6h | 6h | 120 | 120 |
| 69 | 2.3.7.2 | [PD] Iniciar animación del logo | milestone | 0d | 2017-11-17 19:00 A | 2017-11-17 19:00 A | 68 | 100% |  |  | start no earlier than 2017-11-17 09:00 | Luis |  |  |  |  |
| 70 | 2.3.8 | **[V2] Diseñar e implementar de la arquitectura basada en componentes (diagrama de clases e implementación) [2/4]** |  | 5d | 2017-11-20 09:00 A | 2017-11-24 19:00 A |  | 100% |  |  |  |  | 50.4h | 50.4h | 1,008 | 1,008 |
| 71 | 2.3.8.1 | [V2] Diseñar e implementar la arquitectura de componentes final [1/3] |  | 5d | 2017-11-20 09:00 A | 2017-11-24 19:00 A | 33, 60 | 100% |  |  | finish no earlier than 2017-11-24 19:00 | Luis [63%]; Laura [63%] | 50.4h | 50.4h | 1,008 | 1,008 |
| 72 | 2.3.9 | [V1] Hacer sistema de gestión de eventos (Trigger System/Event Manager) [1/2] |  | 5d | 2017-11-20 09:00 A | 2017-11-24 19:00 A | 32 | 100% |  |  | finish no earlier than 2017-11-24 19:00 | Luis [31%]; Laura [31%] | 24.8h | 24.8h | 496 | 496 |
| 73 | 2.3.10 | **[TDS] Obtener sonidos externos [1/2]** |  | 1d | 2017-11-21 09:00 | 2017-11-21 19:00 |  |  |  | 6d |  |  | 9.92h |  | 198.4 |  |
| 74 | 2.3.10.1 | [TDS] Obtener biblioteca sonidos externos |  | 1d | 2017-11-21 09:00 | 2017-11-21 19:00 |  |  |  | 21.25d | start no earlier than 2017-11-21 09:00 | Adrián [40%]; Pablo [84%] | 9.92h |  | 198.4 |  |
| 75 | 2.3.11 | **[V1] Hacer el sistema de toma de decisión con Lógica Difusa [2/3]** |  | 3d | 2017-11-22 09:00 A | 2017-11-24 19:00 A |  | 100% |  |  |  |  | 19.44h | 19.44h | 388.8 | 388.8 |
| 76 | 2.3.11.1 | [V1] Hacer prototipo inicial del sistema de toma de decisión con lógica difusa |  | 3d | 2017-11-22 09:00 A | 2017-11-24 19:00 A | 42, 29, 30, 31 | 100% |  |  | finish no earlier than 2017-11-24 19:00 | Adrián [27%]; Alexei [27%]; Pablo [27%] | 19.44h | 19.44h | 388.8 | 388.8 |
| 77 | 2.3.12 | [V1] Hacer el sistema de Waypoints para pathfinding continuo [2/3] |  | 3d | 2017-11-22 09:00 A | 2017-11-24 19:00 A | 44, 29, 30, 31 | 100% |  |  | finish no earlier than 2017-11-24 19:00 | Adrián [34%]; Alexei [34%]; Pablo [34%] | 24.48h | 24.48h | 489.6 | 489.6 |
| 78 | 2.3.13 | [PM] Aplicar el modelo EVA en Project [1/3] |  | 1d | 2017-11-27 09:00 A | 2017-11-27 19:00 A |  | 100% |  |  | start no earlier than 2017-11-27 09:00 | Adrián [56%]; Alexei [56%] | 8.96h | 8.96h | 179.2 | 179.2 |
| 79 | 2.3.14 | [V2] [RETRASO] Realizar el sistema de control del player por motor de físicas 2D, dynamic o kinematic |  | 2d | 2017-11-27 09:00 A | 2017-11-28 19:00 | 49, 60 | 25% | 1.5d | 131d | start no earlier than 2017-11-27 09:00 | Laura [58%]; Luis [58%] | 18.56h | 4.64h | 371.2 | 92.8 |

| ID | WBS | Task | Type | Duration | Start | Finish | Predecessors | Complete | Remaining | Total slack | Constraint | Resources | Work | Actual work | Cost | Actual cost |
| --- | --- | --- | --- | --- | --- | --- | --- | --- | --- | --- | --- | --- | --- | --- | --- | --- |
| 80 | 2.3.15 | **[TDS] Hacer grabaciones propias [1/2]** |  | 2d | 2017-11-27 09:00 A | 2017-11-28 19:00 A |  | 100% |  |  |  |  | 14.88h | 14.88h | 297.6 | 297.6 |
| 81 | 2.3.15.1 | [TDS] [NUEVA] Hacer guión de los personajes | milestone | 0d | 2017-11-27 09:00 A | 2017-11-27 09:00 A |  | 100% |  |  | finish no earlier than 2017-11-28 19:00 |  |  |  |  |  |
| 82 | 2.3.15.2 | [TDS] Grabar voces personajes [3/4] |  | 2d | 2017-11-27 09:00 A | 2017-11-28 19:00 A | 34 | 100% |  |  | start no earlier than 2017-11-27 09:00 | Adrián [31%]; Luis [31%]; Pablo [31%] | 14.88h | 14.88h | 297.6 | 297.6 |
| 83 | 2.3.16 | [PM] Detallar plan iteraciones del mes de Diciembre. Creación Subtareas y precedencias en Project |  | 0.5d | 2017-11-28 09:00 A | 2017-11-28 13:00 A |  | 100% |  |  | start no earlier than 2017-11-28 09:00 | Alexei [60%]; Adrián [60%] | 4.8h | 4.8h | 96 | 96 |
| 84 | 2.3.17 | [PM] Detallar plan iteraciones del mes de Diciembre. Asignar recursos a las tareas en Project |  | 0.5d | 2017-11-28 15:00 A | 2017-11-28 19:00 A | 83 | 100% |  |  | finish no earlier than 2017-11-20 19:00 | Alexei [60%]; Adrián [60%] | 4.8h | 4.8h | 96 | 96 |
| 85 | 2.3.18 | [TDS] Rellenar Cue Sheet [3/6] |  | 0.5d | 2017-11-29 09:00 | 2017-11-29 13:00 |  |  |  | 130.5d | start no earlier than 2017-11-29 09:00 | Adrián [8%]; Luis [8%]; Pablo [8%] | 0.96h |  | 19.2 |  |
| 86 | 2.3.19 | [TDS] Rellenar Hoja de metadatos [2/4] |  | 0.5d | 2017-11-29 09:00 | 2017-11-29 13:00 |  |  |  | 130.5d | start no earlier than 2017-11-29 09:00 | Adrián [21%]; Luis [21%]; Pablo [21%] | 2.52h |  | 50.4 |  |
| 87 | 2.3.20 | [V1] [NUEVA] Iniciar el documento de diseño de toma de decisión: espacio y métodos | milestone | 0d | 2017-11-29 09:00 A | 2017-11-29 09:00 A |  | 100% |  |  | start no earlier than 2017-11-29 09:00 |  |  |  |  |  |
| 88 | 2.3.21 | [V1] [NUEVA] Acoplar sistema de IA | milestone | 0d | 2017-11-29 09:00 A | 2017-11-29 09:00 A |  | 100% |  |  | start no earlier than 2017-11-29 09:00 |  |  |  |  |  |
| 89 | 2.3.22 | [PM] Realizar informe iteración 3 |  | 0.5d | 2017-11-29 09:00 A | 2017-11-29 13:00 A | 78, 79, 80, 84 | 100% |  |  | start no earlier than 2017-11-29 09:00 | Laura [25%]; Luis [25%]; Pablo [25%] | 3h | 3h | 60 | 60 |
| 90 | 2.3.23 | Objetivo iteración 3 | milestone | 0d | 2017-11-29 13:00 | 2017-11-29 13:00 | 89 |  |  | 130.5d | start no earlier than 2017-11-29 09:00 |  |  |  |  |  |
| 91 | 2.4 | **Iteración 4** |  | 10d | 2017-11-30 09:00 A | 2017-12-13 19:00 | 56 | 93% | 0.65d |  |  |  | 227.76h | 196.08h | 4,555.2 | 3,921.6 |
| 92 | 2.4.1 | [PM] Registrar tiempos y % de realización de tareas en Project (4/5) |  | 9.5d | 2017-11-30 09:00 A | 2017-12-13 13:00 A |  | 100% |  |  | start no earlier than 2017-11-30 09:00 | Adrián [1%]; Alexei [1%]; Laura [1%]; Luis [1%]; Pablo [1%] | 3.8h | 3.8h | 76 | 76 |
| 93 | 2.4.2 | Hacer reuniones de seguimiento diarias de 15 min |  | 10d | 2017-11-30 09:00 A | 2017-12-13 19:00 A |  | 100% |  |  | start no earlier than 2017-11-30 09:00 |  |  |  |  |  |
| 94 | 2.4.3 | [NUEVA] Instalar Manjaro | milestone | 0d | 2017-11-30 09:00 A | 2017-11-30 09:00 A |  | 100% |  |  |  |  |  |  |  |  |
| 95 | 2.4.4 | [V1] Hacer el sistema de toma de decisión con Lógica Difusa [3/3] |  | 2d | 2017-11-30 09:00 A | 2017-12-01 19:00 A |  | 100% |  |  | finish no earlier than 2017-12-01 19:00 | Alexei [63%] | 10.08h | 10.08h | 201.6 | 201.6 |
| 96 | 2.4.5 | **[TDS] [RETRASO] Integrar del motor de audio en el juego con prueba de concepto [1/2]** |  | 3.33d | 2017-11-30 09:00 A | 2017-12-05 11:38 A |  | 100% |  |  |  |  | 27.6h | 27.6h | 552 | 552 |
| 97 | 2.4.5.1 | [TDS] Instalar FMOD API y FMOD STUDIO API |  | 0.33d | 2017-12-05 09:00 A | 2017-12-05 11:38 A |  | 100% |  |  | start no earlier than 2017-12-05 09:00 | Adrián | 2.64h | 2.64h | 52.8 | 52.8 |
| 98 | 2.4.5.2 | [TDS] Hacer prototipo de fachada de audio |  | 2d | 2017-11-30 09:00 A | 2017-12-01 19:00 A |  | 100% |  |  | finish no earlier than 2017-12-01 19:00 | Adrián [78%]; Pablo [78%] | 24.96h | 24.96h | 499.2 | 499.2 |
| 99 | 2.4.6 | **[V2] Diseñar e implementar de la arquitectura basada en componentes (diagrama de clases e implementación) [3/4]** |  | 1d | 2017-11-30 09:00 A | 2017-11-30 19:00 A |  | 100% |  |  |  |  | 10.08h | 10.08h | 201.6 | 201.6 |
| 100 | 2.4.6.1 | [V2] Diseñar e implementar la arquitectura de componentes final [2/3] |  | 1d | 2017-11-30 09:00 A | 2017-11-30 19:00 A | 71 | 100% |  |  |  | Luis [63%]; Laura [63%] | 10.08h | 10.08h | 201.6 | 201.6 |
| 101 | 2.4.7 | [V2] Utilizar propiedades físicas en las mecánicas jugables |  | 1d | 2017-11-30 09:00 A | 2017-11-30 19:00 A |  | 100% |  |  |  | Laura [31%]; Luis [31%] | 4.96h | 4.96h | 99.2 | 99.2 |
| 102 | 2.4.8 | [V2] Implementar las mecánicas de acción |  | 2d | 2017-12-01 09:00 A | 2017-12-04 19:00 A |  | 100% |  |  | finish no earlier than 2017-12-04 19:00 | Laura [46%]; Luis [46%] | 14.72h | 14.72h | 294.4 | 294.4 |
| 103 | 2.4.9 | [RV] Dibujar los bocetos del entorno |  | 2d | 2017-12-01 09:00 A | 2017-12-04 19:00 A |  | 100% |  |  | finish no earlier than 2017-12-04 19:00 | Laura [50%] | 8h | 8h | 160 | 160 |
| 104 | 2.4.10 | [V1] Hacer el sistema de Waypoints para pathfinding continuo [3/3] |  | 1d | 2017-12-04 09:00 A | 2017-12-04 19:00 A |  | 100% |  |  | start no earlier than 2017-12-04 09:00 | Adrián [41%]; Alexei [41%]; Pablo [41%] | 9.84h | 9.84h | 196.8 | 196.8 |

| ID | WBS | Task | Type | Duration | Start | Finish | Predecessors | Complete | Remaining | Total slack | Free slack | Constraint | Resources | Work | Actual work | Cost | Actual cost |
| --- | --- | --- | --- | --- | --- | --- | --- | --- | --- | --- | --- | --- | --- | --- | --- | --- | --- |
| 105 | 2.4.11 | **[TDS] Grabaciones propias[2/2]** |  | 1d | 2017-12-05 09:00 A | 2017-12-05 19:00 A |  | 100% |  |  |  |  |  | 7.92h | 7.92h | 158.4 | 158.4 |
| 106 | 2.4.11.1 | [TDS] Grabar voces personajes [1/4] |  | 1d | 2017-12-05 09:00 A | 2017-12-05 19:00 A |  | 100% |  |  |  | start no earlier than 2017-12-05 09:00 | Luis [33%]; Pablo [33%]; Adrián [33%] | 7.92h | 7.92h | 158.4 | 158.4 |
| 107 | 2.4.11.2 | [TDS][NUEVA] Editar voces y aplicarles efectos | milestone | 0d | 2017-12-05 09:00 A | 2017-12-05 09:00 A |  | 100% |  |  |  | start no earlier than 2017-12-05 09:00 |  |  |  |  |  |
| 108 | 2.4.12 | [V2] Implementar las mecánicas básicas entidades sin IA [1/2] |  | 2d | 2017-12-05 09:00 A | 2017-12-06 19:00 A |  | 100% |  |  |  | finish no earlier than 2017-12-06 19:00 | Luis [34%]; Laura [34%] | 10.88h | 10.88h | 217.6 | 217.6 |
| 109 | 2.4.13 | [V2] [RETRASO] Realizar el sistema de control del player por motor de físicas 2D, dynamic o kinematic |  | 2d | 2017-12-06 09:00 A | 2017-12-07 19:00 A | 101 | 100% |  |  |  | finish no earlier than 2017-12-07 19:00 | Laura [58%]; Luis [58%] | 18.56h | 18.56h | 371.2 | 371.2 |
| 110 | 2.4.14 | [V1] Hacer el sistema de percepción sensorial (vista, oído, olfato, canales…) [2/2] |  | 2d | 2017-12-06 09:00 A | 2017-12-07 19:00 A |  | 100% |  |  |  | finish no earlier than 2017-12-07 19:00 | Adrián [56%]; Alexei [56%]; Pablo [56%] | 26.88h | 26.88h | 537.6 | 537.6 |
| 111 | 2.4.15 | [PD] Realizar el vídeo con animación del logo de la empresa [1/2] |  | 1d | 2017-12-08 09:00 A | 2017-12-08 19:00 A |  | 100% |  |  |  | start no earlier than 2017-12-08 09:00 | Alexei [41%]; Laura [41%]; Luis [41%] | 9.84h | 9.84h | 196.8 | 196.8 |
| 112 | 2.4.16 | [V1] Realizar el sistema de toma de decisión con Behaviour Trees [1/2] |  | 2d | 2017-12-08 09:00 | 2017-12-11 19:00 |  |  |  | 21.75d | 2d | finish no earlier than 2017-12-11 19:00 | Adrián [56%]; Alexei [56%]; Pablo [56%] | 26.88h |  | 537.6 |  |
| 113 | 2.4.17 | [V1] Hacer el sistema de gestión de eventos (Trigger System/Event Manager) [2/2] |  | 2d | 2017-12-11 09:00 A | 2017-12-12 19:00 A |  | 100% |  |  |  | start no earlier than 2017-12-11 09:00 | Laura [12%]; Luis [12%]; Adrián [52%]; Alexei [52%]; Pablo [52%] | 12.96h | 12.96h | 259.2 | 259.2 |
| 114 | 2.4.18 | [V2] Implementar la cámara de seguimiento |  | 1d | 2017-12-11 09:00 A | 2017-12-11 19:00 A | 109 | 100% |  |  |  | start no earlier than 2017-12-11 09:00 | Laura [87%]; Luis [87%] | 13.92h | 13.92h | 278.4 | 278.4 |
| 115 | 2.4.19 | [V2] Definir el formato propio para la definición de los niveles (documento con la especificación del formato) (2/2) |  | 1d | 2017-12-12 09:00 | 2017-12-12 19:00 |  |  |  | 121d |  | start no earlier than 2017-12-12 09:00 | Adrián [12%]; Alexei [12%]; Laura [12%]; Luis [12%]; Pablo [12%] | 4.8h |  | 96 |  |
| 116 | 2.4.20 | [PM] Aplicar el modelo EVA en Project [2/3] |  | 0.5d | 2017-12-13 09:00 A | 2017-12-13 13:00 A |  | 100% |  |  |  | start no earlier than 2017-12-13 09:00 | Adrián [38%]; Alexei [38%] | 3.04h | 3.04h | 60.8 | 60.8 |
| 117 | 2.4.21 | [TDS] [ADELANTO] Modificar y añadir sonidos externos [2/2] | milestone | 0d | 2017-12-13 09:00 A | 2017-12-13 09:00 A |  | 100% |  |  |  | start no earlier than 2017-12-13 09:00 |  |  |  |  |  |
| 118 | 2.4.22 | [PM] Realizar informe iteración 4 |  | 0.5d | 2017-12-13 15:00 A | 2017-12-13 19:00 A | 95, 102, 103, 104, 105, 109, 110, 113, 114, 115, 116, 92 | 100% |  |  |  | start no earlier than 2017-12-13 09:00 | Laura [25%]; Luis [25%]; Pablo [25%] | 3h | 3h | 60 | 60 |
| 119 | 2.4.23 | Objetivo iteración 4 | milestone | 0d | 2017-12-13 19:00 | 2017-12-13 19:00 | 118 |  |  | 0d |  |  |  |  |  |  |  |
| 120 | 2.5 | **Iteración 5** |  | 7d | 2017-12-14 09:00 A | 2017-12-22 19:00 | 91 | 97% | 0.22d |  |  |  |  | 169.54h | 159.7h | 3,390.8 | 3,194 |
| 121 | 2.5.1 | [PM] Registrar tiempos y % de realización de tareas en Project (5/5) |  | 6.5d | 2017-12-14 09:00 A | 2017-12-22 13:00 A |  | 100% |  |  |  |  | Adrián [1%]; Alexei [1%]; Laura [1%]; Luis [1%]; Pablo [1%] | 2.6h | 2.6h | 52 | 52 |
| 122 | 2.5.2 | Hacer reuniones de seguimiento diarias de 15 min |  | 6.5d | 2017-12-14 09:00 A | 2017-12-22 13:00 A |  | 100% |  |  |  | start no earlier than 2017-12-14 09:00 |  |  |  |  |  |
| 123 | 2.5.3 | [V1] Realizar el sistema de toma de decisión con Behaviour Trees [1-2/2] |  | 2d | 2017-12-14 09:00 A | 2017-12-15 19:00 A | 112 | 100% |  |  |  |  | Alexei [66%]; Adrián [66%]; Pablo [66%] | 31.68h | 31.68h | 633.6 | 633.6 |
| 124 | 2.5.4 | **[V2] Diseñar e implementar de la arquitectura basada en componentes (diagrama de clases e implementación) [4/4]** |  | 1d | 2017-12-14 09:00 A | 2017-12-14 19:00 A |  | 100% |  |  |  |  |  | 10.08h | 10.08h | 201.6 | 201.6 |
| 125 | 2.5.4.1 | [V2] Diseñar e implementar la arquitectura de componentes final [3/3] |  | 1d | 2017-12-14 09:00 A | 2017-12-14 19:00 A | 100 | 100% |  |  |  |  | Luis [63%]; Laura [63%] | 10.08h | 10.08h | 201.6 | 201.6 |
| 126 | 2.5.5 | [PD] Vídeo con animación del logo de la empresa [2/2] |  | 2d | 2017-12-14 09:00 A | 2017-12-15 19:00 A | 111 | 100% |  |  |  | finish no earlier than 2017-12-15 19:00 | Alexei [31%]; Laura [31%]; Luis [31%] | 14.88h | 14.88h | 297.6 | 297.6 |
| 127 | 2.5.6 | [V2] Hacer mecánicas básicas entidades sin IA [2/2] |  | 1d | 2017-12-15 09:00 A | 2017-12-15 19:00 A | 108 | 100% |  |  |  | start no earlier than 2017-12-15 09:00 | Laura [63%]; Luis [63%] | 10.08h | 10.08h | 201.6 | 201.6 |
| 128 | 2.5.7 | [TDS] Implementar la integración del motor de audio en el juego con prueba de concepto[2/2] |  | 1d | 2017-12-15 09:00 A | 2017-12-15 19:00 A |  | 100% |  |  |  | start no earlier than 2017-12-15 09:00 | Adrián [25%] | 2h | 2h | 40 | 40 |
| 129 | 2.5.8 | [V1] Acabar el documento de diseño de mecánicas de los NPCs |  | 1d | 2017-12-18 09:00 A | 2017-12-18 19:00 A |  | 100% |  |  |  | start no earlier than 2017-12-18 09:00 | Adrián [12%]; Alexei [12%]; Pablo [12%]; Laura [12%]; Luis [12%] | 4.8h | 4.8h | 96 | 96 |
| 130 | 2.5.9 | [V1] Acabar el documento de diseño de toma de decisión: espacio y métodos |  | 1d | 2017-12-18 09:00 A | 2017-12-18 19:00 A |  | 100% |  |  |  | start no earlier than 2017-12-18 09:00 | Adrián [31%]; Alexei [31%]; Pablo [31%] | 7.44h | 7.44h | 148.8 | 148.8 |
| 131 | 2.5.10 | [V1] Acabar el documento de diseño técnico del motor de IA |  | 1d | 2017-12-18 09:00 A | 2017-12-18 19:00 A |  | 100% |  |  |  | start no earlier than 2017-12-18 09:00 | Adrián [31%]; Alexei [31%]; Pablo [31%] | 7.44h | 7.44h | 148.8 | 148.8 |
| 132 | 2.5.11 | [V1] Realizar el documento de diseño de requerimientos y funciones de red |  | 1d | 2017-12-18 09:00 A | 2017-12-18 19:00 A |  | 100% |  |  |  | start no earlier than 2017-12-18 09:00 | Adrián [25%]; Alexei [25%]; Laura [25%]; Luis [25%]; Pablo [25%] | 10h | 10h | 200 | 200 |
| 133 | 2.5.12 | [V1] Realizar el documento de diseño técnico del motor de red |  | 1d | 2017-12-19 09:00 A | 2017-12-19 19:00 A |  | 100% |  |  |  | start no earlier than 2017-12-19 09:00 | Adrián [37%]; Alexei [37%]; Laura [37%]; Luis [37%]; Pablo [37%] | 14.8h | 14.8h | 296 | 296 |
| 134 | 2.5.13 | [TDS] Grabación de síntesis [1/2] |  | 1d | 2017-12-19 09:00 | 2017-12-19 19:00 |  |  |  | 15.55d | 0d | start no earlier than 2017-12-19 09:00 | Adrián [41%]; Luis [41%]; Pablo [41%] | 9.84h |  | 196.8 |  |
| 135 | 2.5.14 | [TDS] [RETRASO] Realizar la hoja de metadatos |  | 1.7d | 2017-12-20 09:00 A | 2017-12-21 16:34 A | 134 | 100% |  |  |  | start no earlier than 2017-12-20 09:00 | Adrián [43%]; Luis [43%]; Pablo [43%] | 15.12h | 15.12h | 302.4 | 302.4 |
| 136 | 2.5.15 | [PM] Comparar la planificación prevista y real en Project hito 1 |  | 1.1d | 2017-12-20 18:12 A | 2017-12-21 19:00 A |  | 100% |  |  |  | finish no earlier than 2017-12-21 19:00 | Adrián [56%]; Alexei [56%] | 9.86h | 9.86h | 197.12 | 197.12 |
| 137 | 2.5.16 | [TDS] [RETRASO] Modificar y añadir sonidos externos [2/2] |  | 1.5d | 2017-12-21 09:00 A | 2017-12-22 13:00 A |  | 100% |  |  |  | start no earlier than 2017-12-21 09:00 | Adrián [41%]; Luis [41%]; Pablo [41%] | 14.76h | 14.76h | 295.2 | 295.2 |
| 138 | 2.5.17 | [TDS] [RETRASO] Realizar la Cue Sheet [3-4-5-6/6] |  | 0.5d | 2017-12-21 16:34 A | 2017-12-22 10:34 A | 134, 135 | 100% |  |  |  | start no earlier than 2017-12-21 09:00 | Luis [19%]; Pablo [19%] | 1.52h | 1.52h | 30.4 | 30.4 |
| 139 | 2.5.18 | [RETRASO] [V2] Definir el formato propio para la definición de los niveles (documento con la especificación del formato) (2/2) |  | 0.13d | 2017-12-21 09:00 A | 2017-12-21 10:02 A |  | 100% |  |  |  | start no earlier than 2017-12-21 09:00 | Adrián [12%]; Alexei [12%]; Laura [12%]; Luis [12%]; Pablo [12%] | 0.62h | 0.62h | 12.48 | 12.48 |
| 140 | 2.5.19 | [PM] Aplicar el modelo EVA en Project [3/3] |  | 0.25d | 2017-12-22 09:00 A | 2017-12-22 11:00 A |  | 100% |  |  |  | start no earlier than 2017-12-22 09:00 | Adrián [37%]; Alexei [37%] | 1.48h | 1.48h | 29.6 | 29.6 |
| 141 | 2.5.20 | [PM] Confeccionar Informes de iteración e informe resumen de Hito 1 |  | 0.25d | 2017-12-22 15:00 A | 2017-12-22 17:00 A | 121, 123, 124, 126, 127, 128, 129, 130, 131, 132, 133, 134, 135, 136, 137, 138, 140 | 100% |  |  |  | start no earlier than 2017-12-22 09:00 | Pablo [9%]; Laura [9%]; Luis [9%] | 0.54h | 0.54h | 10.8 | 10.8 |
| 142 | 2.5.21 | [V1] [NUEVO] Hacer el sistema de percepción sensorial (vista, oído, olfato, canales…) [2/2] | milestone | 0d | 2017-12-22 09:00 A | 2017-12-22 09:00 A |  | 100% |  |  |  | start no earlier than 2017-12-22 09:00 |  |  |  |  |  |
| 143 | 2.5.22 | [V1] [NUEVO]Acoplar sistema de IA | milestone | 0d | 2017-12-22 09:00 A | 2017-12-22 09:00 A |  | 100% |  |  |  | start no earlier than 2017-12-22 09:00 |  |  |  |  |  |
| 144 | 2.5.23 | [V1] [NUEVO] Preparar ejecutable para la máquina objetivo | milestone | 0d | 2017-12-22 09:00 A | 2017-12-22 09:00 A |  | 100% |  |  |  | start no earlier than 2017-12-22 09:00 |  |  |  |  |  |
| 145 | 2.5.24 | [V2] [NUEVO] [ADELANTADO] [HITO 3] Diseñar y crear niveles | milestone | 0d | 2017-12-22 09:00 A | 2017-12-22 09:00 A |  | 100% |  |  |  | start no earlier than 2017-12-22 09:00 |  |  |  |  |  |
| 146 | 2.5.25 | [V2] [NUEVO] [ADELANTADO][HITO 2] Hacer power-ups y elementos adicionales | milestone | 0d | 2017-12-22 09:00 A | 2017-12-22 09:00 A |  | 100% |  |  |  | start no earlier than 2017-12-22 09:00 |  |  |  |  |  |
| 147 | 2.5.26 | [V2] [NUEVO] Implementar las mecánicas de acción | milestone | 0d | 2017-12-22 09:00 A | 2017-12-22 09:00 A |  | 100% |  |  |  | start no earlier than 2017-12-22 09:00 |  |  |  |  |  |
| 148 | 2.5.27 | [V2] [NUEVO] Realizar el sistema de control del player por motor de físicas 2D, dynamic o kinematic | milestone | 0d | 2017-12-22 09:00 A | 2017-12-22 09:00 A |  | 100% |  |  |  | start no earlier than 2017-12-22 09:00 |  |  |  |  |  |
| 149 | 2.5.28 | [V2] [NUEVO] Utilizar propiedades físicas en las mecánicas jugables | milestone | 0d | 2017-12-22 09:00 A | 2017-12-22 09:00 A |  | 100% |  |  |  | start no earlier than 2017-12-22 09:00 |  |  |  |  |  |
| 150 | 2.5.29 | [NUEVO] Preparar entregables hito 1 | milestone | 0d | 2017-12-22 09:00 A | 2017-12-22 09:00 A |  | 100% |  |  |  | start no earlier than 2017-12-22 09:00 |  |  |  |  |  |
| 151 | 2.5.30 | Objetivo iteración 5 | milestone | 0d | 2017-12-22 17:00 | 2017-12-22 17:00 | 141 |  |  | 15.25d |  |  |  |  |  |  |  |

| ID | WBS | Task | Duration | Start | Finish | Predecessors | Total slack | Free slack | Constraint |
| --- | --- | --- | --- | --- | --- | --- | --- | --- | --- |
| 152 | 3 | **Hito 2** | 16d | 2018-01-07 09:00 | 2018-01-26 19:00 | 13 |  |  |  |
| 153 | 3.1 | [PM] Elaborar la presentación del Hito 1 | 1d | 2018-01-11 09:00 | 2018-01-11 19:00 |  | 98d | 0d | start no earlier than 2018-01-11 09:00 |
| 154 | 3.2 | [PM] Exponer la presentación del Hito 1 | 1d | 2018-01-12 09:00 | 2018-01-12 19:00 | 153 | 98d |  | start no earlier than 2018-01-12 09:00 |
| 155 | 3.3 | [PM] Revisar especificación proyecto | 3d | 2018-01-08 09:00 | 2018-01-10 19:00 |  | 77.5d |  |  |
| 156 | 3.4 | [PM] Reestimar proyecto | 3d | 2018-01-08 09:00 | 2018-01-10 19:00 |  | 77.5d |  |  |
| 157 | 3.5 | [PM] Detallar plan iteraciones del mes de Enero. Creación Subtareas y precedencias en Project | 1d | 2018-01-08 09:00 | 2018-01-08 19:00 |  | 79.5d |  |  |
| 158 | 3.6 | [PM] Detallar plan iteraciones del mes de Enero. Asignar recursos a las tareas en Project | 1d | 2018-01-08 09:00 | 2018-01-08 19:00 |  | 79.5d |  |  |
| 159 | 3.7 | [PM] Registrar tiempos y % de realización de tareas en Project | 0.63d | 2018-01-08 09:00 | 2018-01-08 16:02 |  | 79.87d |  |  |
| 160 | 3.8 | [PM] Comparar la planificación prevista y real en Project hito 2 | 0.63d | 2018-01-08 09:00 | 2018-01-08 16:02 |  | 79.87d |  |  |
| 161 | 3.9 | [PM] Confeccionar Informes de iteración e informe resumen de Hito 2 | 0.63d | 2018-01-08 09:00 | 2018-01-08 16:02 |  | 79.87d |  |  |
| 162 | 3.10 | [V1] Sistema de depuración visual in-game de la IA | 3.75d | 2018-01-08 09:00 | 2018-01-11 17:00 |  | 76.75d |  |  |
| 163 | 3.11 | [V1] Multijugador en tiempo real | 11.25d | 2018-01-08 09:00 | 2018-01-23 11:00 |  | 69.25d |  |  |
| 164 | 3.12 | [V2] Creación de un cargador de niveles | 3.13d | 2018-01-08 09:00 | 2018-01-11 10:02 |  | 77.37d |  |  |
| 165 | 3.13 | [V2] Gestión de colisiones de la cámara (sistema de depuración para ver colisiones) | 1.88d | 2018-01-08 09:00 | 2018-01-09 18:02 |  | 78.62d |  |  |
| 166 | 3.14 | [V2] Integración de librería para GUI | 0.63d | 2018-01-08 09:00 | 2018-01-08 16:02 |  | 79.87d |  |  |
| 167 | 4 | **Hito 3** | 35d | 2018-02-07 09:00 | 2018-03-27 19:00 | 152 |  |  |  |
| 168 | 4.1 | [PM] Detallar plan iteraciones del mes de Febrero-Marzo. Creación Subtareas y precedencias en Project | 1d | 2018-02-07 09:00 | 2018-02-07 19:00 |  | 68.75d |  |  |
| 169 | 4.2 | [PM] Detallar plan iteraciones del mes de Febrero-Marzo Asignar recursos a las tareas en Project | 1d | 2018-02-07 09:00 | 2018-02-07 19:00 |  | 68.75d |  |  |
| 170 | 4.3 | [PM] Registrar tiempos y % de realización de tareas en Project | 0.63d | 2018-02-07 09:00 | 2018-02-07 16:02 |  | 69.12d |  |  |
| 171 | 4.4 | [PM] Comparar la planificación prevista y real en Project hito 3 | 0.63d | 2018-02-07 09:00 | 2018-02-07 16:02 |  | 69.12d |  |  |
| 172 | 4.5 | [PM] Confeccionar Informes de iteración e informe resumen de Hito 3 | 0.63d | 2018-02-07 09:00 | 2018-02-07 16:02 |  | 69.12d |  |  |
| 173 | 4.6 | [PM] Elaborar la presentación del Hito 3 | 0.75d | 2018-02-07 09:00 | 2018-02-07 17:00 |  | 69d |  |  |
| 174 | 4.7 | [PM] Exponer la presentación del Hito 3 | 0.75d | 2018-02-07 09:00 | 2018-02-07 17:00 |  | 69d |  |  |
| 175 | 4.8 | [TAG] Estructura básica del nodo (array de hijos, puntero a padre, puntero a entidad, funcionalidad básica -constructor, destructor, gets, sets, manejo de hijos….) | 0.5d | 2018-02-07 09:00 | 2018-02-07 13:00 |  | 69.25d |  |  |
| 176 | 4.9 | [TAG] Recorrido-dibujado del árbol | 0.5d | 2018-02-07 09:00 | 2018-02-07 13:00 |  | 69.25d |  |  |
| 177 | 4.10 | [TAG] Estructura básica de la entidad (Constructor, destructor, funciones… todas virtuales, vacías) | 0.5d | 2018-02-07 09:00 | 2018-02-07 13:00 |  | 69.25d |  |  |
| 178 | 4.11 | [TAG] Matrices (model, view, projection) y pila estáticas y su manejo | 0.63d | 2018-02-07 09:00 | 2018-02-07 16:02 |  | 69.12d |  |  |
| 179 | 4.12 | [TAG] Estructura básica de la transformación (Constructor, destructor, matriz transformación…) | 0.5d | 2018-02-07 09:00 | 2018-02-07 13:00 |  | 69.25d |  |  |
| 180 | 4.13 | [TAG] Operaciones de transformación (trasladar, rotar, escalar, identidad, trasponer, invertir, todas con GLM) | 0.75d | 2018-02-07 09:00 | 2018-02-07 17:00 |  | 69d |  |  |
| 181 | 4.14 | [TAG] Dibujado (begindraw, enddraw, manejo pila y matriz model) | 0.75d | 2018-02-07 09:00 | 2018-02-07 17:00 |  | 69d |  |  |
| 182 | 4.15 | [TAG] Estructura básica de la cámara (Constructor, destructor, matriz proyección) | 0.38d | 2018-02-07 09:00 | 2018-02-07 12:02 |  | 69.37d |  |  |
| 183 | 4.16 | [TAG] Rellenar matriz perspectiva (con glm) | 0.25d | 2018-02-07 09:00 | 2018-02-07 11:00 |  | 69.5d |  |  |
| 184 | 4.17 | [TAG] Estructura básica de la luz (Constructor, destructor) | 0.38d | 2018-02-07 09:00 | 2018-02-07 12:02 |  | 69.37d |  |  |
| 185 | 4.18 | [TAG] Datos y funciones luz puntual | 0.38d | 2018-02-07 09:00 | 2018-02-07 12:02 |  | 69.37d |  |  |
| 186 | 4.19 | [TAG] Estructura básica de la malla (Constructor, destructor) | 0.38d | 2018-02-07 09:00 | 2018-02-07 12:02 |  | 69.37d |  |  |
| 187 | 4.20 | [TAG] Datos de mallas, texturas, materiales… (llamadas al gestor de recursos) | 0.5d | 2018-02-07 09:00 | 2018-02-07 13:00 |  | 69.25d |  |  |
| 188 | 4.21 | [TAG] Dibujado (begindraw, enddraw, matriz model…) | 0.63d | 2018-02-07 09:00 | 2018-02-07 16:02 |  | 69.12d |  |  |
| 189 | 4.22 | [TAG] Estructura básica del gestor de recursos (constructor, destructor, vectores de recursos) | 0.5d | 2018-02-07 09:00 | 2018-02-07 13:00 |  | 69.25d |  |  |
| 190 | 4.23 | [TAG] Obtener recurso (gestión adecuada de memoria) | 0.75d | 2018-02-07 09:00 | 2018-02-07 17:00 |  | 69d |  |  |
| 191 | 4.24 | [TAG] Estructura básica del recurso (constructor, destructor. Es virtual, vacío) | 0.38d | 2018-02-07 09:00 | 2018-02-07 12:02 |  | 69.37d |  |  |
| 192 | 4.25 | [TAG] Estructura básica de la malla (constructor, destructor) | 0.5d | 2018-02-07 09:00 | 2018-02-07 13:00 |  | 69.25d |  |  |
| 193 | 4.26 | [TAG] Lectura de disco (con assimp) | 0.75d | 2018-02-07 09:00 | 2018-02-07 17:00 |  | 69d |  |  |
| 194 | 4.27 | [TAG] Creación de buffers de vértices, normales, índices… y relleno | 1d | 2018-02-07 09:00 | 2018-02-07 19:00 |  | 68.75d |  |  |
| 195 | 4.28 | [TAG] Dibujado de las mallas (draw, con paso de los buffers a OpenGL) | 1d | 2018-02-07 09:00 | 2018-02-07 19:00 |  | 68.75d |  |  |
| 196 | 4.29 | [TAG] Estructura básica de la textura (constructor, destructor) | 0.25d | 2018-02-07 09:00 | 2018-02-07 11:00 |  | 69.5d |  |  |
| 197 | 4.30 | [TAG] Leer de disco (con librería) y rellenar buffers | 0.75d | 2018-02-07 09:00 | 2018-02-07 17:00 |  | 69d |  |  |
| 198 | 4.31 | [TAG] Dibujado (preparar las texturas y cargarlas en OpenGL) | 1d | 2018-02-07 09:00 | 2018-02-07 19:00 |  | 68.75d |  |  |
| 199 | 4.32 | [TAG] Estructura básica del material (constructor, destructor) | 0.25d | 2018-02-07 09:00 | 2018-02-07 11:00 |  | 69.5d |  |  |
| 200 | 4.33 | [TAG] Leer de disco (con librería o con parser propio) y rellenar valores | 0.63d | 2018-02-07 09:00 | 2018-02-07 16:02 |  | 69.12d |  |  |
| 201 | 4.34 | [TAG] Dibujado (preparar los materiales y cargarlos en OpenGL) | 0.5d | 2018-02-07 09:00 | 2018-02-07 13:00 |  | 69.25d |  |  |
| 202 | 4.35 | [TAG] Estructura básica del shader (constructor, destructor) | 0.5d | 2018-02-07 09:00 | 2018-02-07 13:00 |  | 69.25d |  |  |
| 203 | 4.36 | [TAG] Lectura de disco (con parser propio) y guardarlo | 0.88d | 2018-02-07 09:00 | 2018-02-07 18:02 |  | 68.87d |  |  |
| 204 | 4.37 | [TAG] Estructura básica de la fachada (constructor, destructor, inicialización motor y openGL) | 0.75d | 2018-02-07 09:00 | 2018-02-07 17:00 |  | 69d |  |  |
| 205 | 4.38 | [TAG] Funciones para crear cámaras y gestionarlas (manejo de las cámaras, registro, cálculo de la matriz view) | 1.25d | 2018-02-07 09:00 | 2018-02-08 11:00 |  | 68.5d |  |  |
| 206 | 4.39 | [TAG] Funciones para crear luces y gestionarlas (manejo de las luces registro, cálculo de la matriz light) | 0.75d | 2018-02-07 09:00 | 2018-02-07 17:00 |  | 69d |  |  |
| 207 | 4.40 | [TAG] Funciones para crear transformaciones (creación de varios nodos con las transformaciones, manejo de las transformaciones) | 0.75d | 2018-02-07 09:00 | 2018-02-07 17:00 |  | 69d |  |  |
| 208 | 4.41 | [TAG] Funciones para crear mallas y animaciones | 0.75d | 2018-02-07 09:00 | 2018-02-07 17:00 |  | 69d |  |  |
| 209 | 4.42 | [TAG] Funciones para crear shaders y gestionarlos | 0.75d | 2018-02-07 09:00 | 2018-02-07 17:00 |  | 69d |  |  |
| 210 | 4.43 | [TAG] Shader básico (Sombreado de Phong, reflexión de Phong) con materiales | 0.63d | 2018-02-07 09:00 | 2018-02-07 16:02 |  | 69.12d |  |  |
| 211 | 4.44 | [TAG] Integración con la aplicación | 3.75d | 2018-02-07 09:00 | 2018-02-12 17:00 |  | 66d |  |  |
| 212 | 4.45 | [TAG] Realización de una fachada genérica | 1.88d | 2018-02-07 09:00 | 2018-02-08 18:02 |  | 67.87d |  |  |
| 213 | 4.46 | [V1] Gestión de recursos de IA con Level-of-Detail (LoD) | 6.25d | 2018-02-07 09:00 | 2018-02-15 11:00 |  | 63.5d |  |  |
| 214 | 4.47 | [V1] Sistema de predicción de movimiento multijugador en tiempo real | 3.75d | 2018-02-07 09:00 | 2018-02-12 17:00 |  | 66d |  |  |
| 215 | 4.48 | [V1] Sistema de depuración visual del motor de Red | 3.75d | 2018-02-07 09:00 | 2018-02-12 17:00 |  | 66d |  |  |
| 216 | 4.49 | [V2] Diseño y creación de niveles | 5d | 2018-02-07 09:00 | 2018-02-13 19:00 |  | 64.75d |  |  |
| 217 | 4.50 | [V2] Implementación de menús | 3.75d | 2018-02-07 09:00 | 2018-02-12 17:00 |  | 66d |  |  |
| 218 | 4.51 | [V2] Implementación del HUD | 2.5d | 2018-02-07 09:00 | 2018-02-09 13:00 |  | 67.25d |  |  |
| 219 | 4.52 | [V2] Implementación de clipping (comparativa de FPS con/sin oclusiones) | 1.25d | 2018-02-07 09:00 | 2018-02-08 11:00 |  | 68.5d |  |  |
| 220 | 4.53 | [V2] Oclusiones mediante tecnicas de rasterización (comparativa de FPS con/sin oclusiones) | 1.25d | 2018-02-07 09:00 | 2018-02-08 11:00 |  | 68.5d |  |  |
| 221 | 4.54 | [V2] Sistema de Level-Of-Detail (LoD) para la selección de la malla gráfica de los objetos | 1.88d | 2018-02-07 09:00 | 2018-02-08 18:02 |  | 67.87d |  |  |

| ID | WBS | Task | Duration | Start | Finish | Predecessors | Total slack | Constraint |
| --- | --- | --- | --- | --- | --- | --- | --- | --- |
| 222 | 4.55 | [V2] Sistema de Level-Of-Detail continuo (CLoD) para el terreno | 3.13d | 2018-02-07 09:00 | 2018-02-12 10:02 |  | 66.62d |  |
| 223 | 4.56 | [V2] Creación e implementación del skybox | 3.13d | 2018-02-07 09:00 | 2018-02-12 10:02 |  | 66.62d |  |
| 224 | 4.57 | [TDS] Música | 3.75d | 2017-12-22 11:00 | 2017-12-27 19:00 |  | 110d | finish no earlier than 2017-12-27 19:00 |
| 225 | 4.58 | [TDS] Síntesis [2/2] | 3.75d | 2018-01-11 09:00 | 2018-01-16 17:00 |  | 96.25d | start no earlier than 2018-01-11 09:00 |
| 226 | 4.59 | [TDS] Resto de la biblioteca (máx. 1/3), cuesheet y metadatos finales | 7.5d | 2018-02-07 09:00 | 2018-02-16 13:00 |  | 62.25d |  |
| 227 | 4.60 | [PD] Cartel juego/proyecto | 3.75d | 2018-02-07 09:00 | 2018-02-12 17:00 |  | 66d |  |
| 228 | 4.61 | [PD] Trailer juego/proyecto | 11.25d | 2018-02-07 09:00 | 2018-02-22 11:00 |  | 58.5d |  |
| 229 | 4.62 | [RV] Modelado de los personajes | 7.5d | 2018-02-07 09:00 | 2018-02-16 13:00 |  | 62.25d |  |
| 230 | 4.63 | [RV] Texturizado de los personajes | 6d | 2018-02-07 09:00 | 2018-02-14 19:00 |  | 63.75d |  |
| 231 | 4.64 | [RV] Modelado del entorno y elementos | 11d | 2018-02-07 09:00 | 2018-02-21 19:00 |  | 58.75d |  |
| 232 | 5 | **Hito 4** | 46d | 2018-03-28 09:00 | 2018-05-30 19:00 | 167 |  |  |
| 233 | 5.1 | [PM] Detallar plan iteraciones del mes de Abril-Mayo. Creación Subtareas y precedencias en Project | 1d | 2018-03-28 09:00 | 2018-03-28 19:00 |  | 45d |  |
| 234 | 5.2 | [PM] Detallar plan iteraciones del mes de Abril-Mayo. Asignar recursos a las tareas en Project | 1d | 2018-03-28 09:00 | 2018-03-28 19:00 |  | 45d |  |
| 235 | 5.3 | [PM] Registrar tiempos y % de realización de tareas en Project | 0.63d | 2018-03-28 09:00 | 2018-03-28 16:02 |  | 45.37d |  |
| 236 | 5.4 | [PM] Comparar la planificación prevista y real en Project hito 4 | 0.63d | 2018-03-28 09:00 | 2018-03-28 16:02 |  | 45.37d |  |
| 237 | 5.5 | [PM] Confeccionar Informes de iteración e informe resumen de Hito 4 | 0.63d | 2018-03-28 09:00 | 2018-03-28 16:02 |  | 45.37d |  |
| 238 | 5.6 | [PM] Elaborar la presentación del Hito 4 | 0.75d | 2018-03-28 09:00 | 2018-03-28 17:00 |  | 45.25d |  |
| 239 | 5.7 | [PM] Exponer la presentación del Hito 4 | 0.75d | 2018-03-28 09:00 | 2018-03-28 17:00 |  | 45.25d |  |
| 240 | 5.8 | [TAG] Datos y funciones luz dirigida | 0.63d | 2018-03-28 09:00 | 2018-03-28 16:02 |  | 45.37d |  |
| 241 | 5.9 | [TAG] Otros tipos de luces | 11.25d | 2018-03-28 09:00 | 2018-04-12 11:00 |  | 34.75d |  |
| 242 | 5.10 | [TAG] Estructura básica de la animación (Constructor, destructor) | 0.5d | 2018-03-28 09:00 | 2018-03-28 13:00 |  | 45.5d |  |
| 243 | 5.11 | [TAG] Datos de animaciones, mallas, texturas, materiales (multiples, con llamadas al gestor de recursos) | 0.63d | 2018-03-28 09:00 | 2018-03-28 16:02 |  | 45.37d |  |
| 244 | 5.12 | [TAG] Getión temporal de las animaciones (frames…) | 0.75d | 2018-03-28 09:00 | 2018-03-28 17:00 |  | 45.25d |  |
| 245 | 5.13 | [TAG] Dibujado (begindraw, enddraw, matriz model…) | 0.75d | 2018-03-28 09:00 | 2018-03-28 17:00 |  | 45.25d |  |
| 246 | 5.14 | [TAG] Shader Cartoon | 1.88d | 2018-03-28 09:00 | 2018-03-29 18:02 |  | 44.12d |  |
| 247 | 5.15 | [TAG] Shader light mapping | 1.88d | 2018-03-28 09:00 | 2018-03-29 18:02 |  | 44.12d |  |
| 248 | 5.16 | [TAG] Shader Deferred Shading | 2.75d | 2018-03-28 09:00 | 2018-03-30 17:00 |  | 43.25d |  |
| 249 | 5.17 | [TAG] Bounding boxes (incluye retocar nodos, entidades y recursos malla) | 1.5d | 2018-03-28 09:00 | 2018-03-29 13:00 |  | 44.5d |  |
| 250 | 5.18 | [TAG] Backface culling | 0.5d | 2018-03-28 09:00 | 2018-03-28 13:00 |  | 45.5d |  |
| 251 | 5.19 | [TAG] Frustum culling | 2.5d | 2018-03-28 09:00 | 2018-03-30 13:00 |  | 43.5d |  |
| 252 | 5.20 | [TAG] Shadow mapping | 3.13d | 2018-03-28 09:00 | 2018-04-02 10:02 |  | 42.87d |  |
| 253 | 5.21 | [TAG] Sombras volumétricas | 4.38d | 2018-03-28 09:00 | 2018-04-03 12:02 |  | 41.62d |  |
| 254 | 5.22 | [TAG] Sistema de partículas (sólo la incorporación en el motor) | 3.13d | 2018-03-28 09:00 | 2018-04-02 10:02 |  | 42.87d |  |
| 255 | 5.23 | [TAG] Billboards (sólo la parte de visualización) | 1.25d | 2018-03-28 09:00 | 2018-03-29 11:00 |  | 44.75d |  |
| 256 | 5.24 | [TAG] Skybox (sólo la incorporación en el motor) | 0.63d | 2018-03-28 09:00 | 2018-03-28 16:02 |  | 45.37d |  |
| 257 | 5.25 | [TAG] Otras | 4d | 2018-03-28 09:00 | 2018-04-02 19:00 |  | 42d |  |
| 258 | 5.26 | [V2] Multiplataforma con soporte para Windows | 5d | 2018-03-28 09:00 | 2018-04-03 19:00 |  | 41d |  |
| 259 | 5.27 | [V2] Implementación de nubes | 1.88d | 2018-03-28 09:00 | 2018-03-29 18:02 |  | 44.12d |  |
| 260 | 5.28 | [V2] Implementación de sistemas de partículas | 1.88d | 2018-03-28 09:00 | 2018-03-29 18:02 |  | 44.12d |  |
| 261 | 5.29 | [TDS] Integración de sonido y música en el juego | 3.75d | 2018-03-28 09:00 | 2018-04-02 17:00 |  | 42.25d |  |
| 262 | 5.30 | [TDS] Post producción (mezcla y masterización in-game) | 3.75d | 2018-03-28 09:00 | 2018-04-02 17:00 |  | 42.25d |  |
| 263 | 5.31 | [PD] Making of juego/proyecto | 11.25d | 2018-03-28 09:00 | 2018-04-12 11:00 |  | 34.75d |  |
| 264 | 5.32 | [PD] Créditos | 3.75d | 2018-03-28 09:00 | 2018-04-02 17:00 |  | 42.25d |  |
| 265 | 5.33 | [RV] Rigging de los personajes | 1d | 2018-03-28 09:00 | 2018-03-28 19:00 |  | 45d |  |
| 266 | 5.34 | [RV] Captura de movimiento | 5d | 2018-03-28 09:00 | 2018-04-03 19:00 |  | 41d |  |
| 267 | 5.35 | [RV] Animación de los personajes | 10d | 2018-03-28 09:00 | 2018-04-10 19:00 |  | 36d |  |
| 268 | 5.36 | [RV] Texturizado del entorno y elementos | 6.5d | 2018-03-28 09:00 | 2018-04-05 13:00 |  | 39.5d |  |
